Schedule from OmniPlan.
Project start 2016-04-20

## Resources

| Resource | Group |
| --- | --- |
| Resource 1 | staff |
| Equipment 1 | equipment |
| Material 1 | material |
| Group 1 | group |
| Resource 1 | staff |

## Schedule

| ID | WBS | Task | Predecessors | Complete | Constraint | Work | Actual work |
| --- | --- | --- | --- | --- | --- | --- | --- |
| 1 | 1 | **Release 2.4** |  |  | start no earlier than 2016-04-27 |  |  |
| 2 | 1.1 | Field Interpolations |  | 100% | start no earlier than 2016-04-27 | 40h | 40h |
| 3 | 1.2 | Field Map Attributes | 2 | 100% |  | 16h | 16h |
| 4 | 1.3 | Noise Generator |  | 100% | start no earlier than 2016-05-06 | 40h | 40h |
| 5 | 1.4 | Neutron Cosmics | 4 | 100% |  | 40h | 40h |
| 6 | 1.5 | Options to Force Radiative decay for muons | 5 | 100% |  | 40h | 40h |
| 7 | 1.6 | Material change options | 6 | 100% |  | 24h | 24h |
| 8 | 1.7 | Sensitivity removal option | 7 | 100% |  | 16h | 16h |
| 9 | 2 | **Release 2.5** | 1 |  | start no earlier than 2016-06-17 |  |  |
| 10 | 2.1 | GEMC external libraries |  | 100% |  | 40h | 40h |
| 11 | 2.2 | Remove CPP mats | 10 | 100% |  | 24h | 24h |
| 12 | 2.3 | Accelerator Sync Bank | 11FF | 100% |  | 16h | 16h |
| 13 | 2.4 | Translation Tables | 12 | 100% | start no earlier than 2016-07-05 | 80h | 80h |
| 14 | 2.5 | gstring namespace mlibrary | 13FF | 100% |  | 16h | 16h |
| 15 | 2.6 | Custom V(t) | 14 | 100% | start no earlier than 2016-07-26 | 160h | 160h |
| 16 | 2.7 | Composite Banks | 15 | 100% |  | 120h | 120h |
| 17 | 2.8 | GDML Factory | 16 | 100% |  | 40h | 40h |
| 18 | 2.9 | CAD Factory | 17 | 100% |  | 40h | 40h |
| 19 | 3 | **Release 2.6** | 9 |  |  |  |  |
| 20 | 3.1 | Skip generated event option |  | 100% | start no earlier than 2016-12-22 | 24h | 24h |
| 21 | 3.2 | Magnetic Field info in MHit | 20 | 100% | start no earlier than 2017-01-04 | 16h | 16h |
| 22 | 3.3 | Add Birk Constants | 21 | 100% | start no earlier than 2017-01-17 | 24h | 24h |
| 23 | 3.4 | Add Mirror Optical Smearing Alpha | 22 | 100% | start no earlier than 2017-01-24 | 32h | 32h |
| 24 | 3.5 | FAST MC Mode | 23 | 100% | start no earlier than 2017-02-14 | 200h | 200h |
| 25 | 3.6 | Ion generator option | 24 | 100% | start no earlier than 2017-04-11 | 80h | 80h |
| 26 | 3.7 | BEAGLE event format | 25 | 100% | start no earlier than 2017-05-11 | 80h | 80h |
| 27 | 3.8 | GFLUX detector | 26 | 100% | start no earlier than 2017-06-12 | 40h | 40h |
| 28 | 3.9 | Detector Test Template | 27 | 100% | start no earlier than 2017-07-07 | 40h | 40h |
| 29 | 3.10 | Volume inspector | 28 | 100% | start no earlier than 2017-07-28 | 40h | 40h |
| 30 | 3.11 | Python API | 29 | 100% | start no earlier than 2017-08-17 | 80h | 80h |
| 31 | 3.12 | Axis GUI API | 30 | 100% | start no earlier than 2017-09-19 | 40h | 40h |
| 32 | 3.13 | Culling option API | 31 | 100% | start no earlier than 2017-10-17 | 40h | 40h |
| 33 | 3.14 | Background Merging | 32 | 100% | start no earlier than 2018-02-12 | 160h | 160h |

| ID | WBS | Task | Predecessors | Constraint | Work |
| --- | --- | --- | --- | --- | --- |
| 34 | 4 | **Release 2.7** | 33 | start no earlier than 2018-03-16 |  |
| 35 | 4.1 | Active Phys Volume constructor |  |  | 32h |
| 36 | 4.2 | 3D Map | 35 | start no earlier than 2018-04-18 | 160h |
| 37 | 4.3 | Dipole map with reflection symmetry | 36 | start no earlier than 2018-05-29 | 80h |
| 38 | 4.4 | Shift and rotate field options | 37 | start no earlier than 2018-06-25 | 80h |
| 39 | 4.5 | Luminosity spread of particle in time | 38 | start no earlier than 2018-07-19 | 80h |
